milestone,id,parent,track,owner,status,start,end,task
M3,15.4,15,Client/Pro,André,Open,2026-12-01,2026-12-20,"Activate email notifications (Resend): account, DNS/DKIM, env vars, deliverability test"
M3,8.9,8,Client/Pro,André,Open,2026-08-15,2026-09-30,Empty / error / loading states + server-side validation pass
M3,Bx,,Client/Pro,André,Dormant,,,Email notifications pipeline — si accende con RESEND_API_KEY + DNS/DKIM (vedi M3/15.4)
M4,10.10,10,Shared,Lucio,Open,2026-08-04,2026-08-29,"Adempimenti: riga nel registro trattamenti, informativa privacy, retention di vat_check_payload, ToS (una P.IVA per profilo, durata)"
M4,10.13,10,Internal,Lucio,Open,2026-09-08,2026-09-25,"Registro verifiche: pagina dedicata con filtri (professionista, tipo evento, periodo, operatore), paginazione ed export CSV. Oggi in coda si vedono solo gli ultimi 100 movimenti"
M4,10.1b,10,Shared,Lucio,Open,2026-09-01,2026-10-15,"Gradino 3 via Openapi: stato+denominazione 2-5 centesimi a professionista (listino 01/08), PEC impresa 3 cent. Sandbox gratuita; serve DPA art.28"
M4,10.3,10,Client/Pro,Lucio,Open,2026-10-01,2026-10-31,"Il livello pesa nel ranking (parametri dichiarati, Reg. P2B) + SLA 48h sulla coda"
M4,10.4,10,Internal,Lucio,Open,2026-08-04,2026-08-12,"Scadenza della verifica (proposta 6 mesi) + ricontrollo periodico con declassamento assistito, mai automatico"
M4,10.5,,Internal,Lucio,Dormant,,,"Ritentativo notturno (cron Vercel, 22:00 UTC = mezzanotte italiana): esce subito se non c'e' nulla in attesa, max 5 notti per caso, non ripete a meno di 20h [mig 043] — si accende con CRON_SECRET in Vercel Production (vedi M1/10.14)"
M4,10.7,10,Internal,Lucio,Open,2026-08-08,2026-08-22,"Telemetria in /admin/analisi: quanti tentano, quanti conferma il VIES, quanti finiscono a mano, tempi di lavorazione"
M4,10.8,10,Client/Pro,Lucio,Open,2026-08-11,2026-08-25,Richiesta della P.IVA come ultimo passo dell'onboarding professionista AGGIORNAMENTO 14/08: l'onboarding pro ora esiste (piano → questionario → profilo) e la verifica e' gated sui tier a pagamento; decidere se la P.IVA diventa l'ultimo passo dell'onboarding per chi sceglie Pro/Business.
M4,10.9,10,Internal,Lucio,Open,2026-09-01,2026-09-20,"Casi limite: P.IVA sospesa per affitto d'azienda, Gruppo IVA, cessata + raccolta codice fiscale (base per DAC7)"
M5,15.5,15,Internal,Lucio,Open,2026-12-10,2026-12-31,"Error monitoring, uptime alerts, backups; go-live checklist + rollback"
M5,N14,,Internal,Lucio,Open,2026-09-01,2026-09-20,"Install a consent-exempt EU analytics tool (Plausible or Matomo, Garante 7.2) — no cookie banner, no user-level tracking. Nothing is installed today"
M5,N7,,Internal,Lucio,Open,2026-09-01,2026-09-30,"Move the /admin/analisi aggregates into DB views (known debt from the 18 Jul note: computed in-page, fine at demo volume)"
M5,N8,,Internal,Lucio,Open,2026-09-01,2026-09-15,"Decide whether abandoned chats get logged — only completed briefs are counted today, so funnel drop-off is invisible"
M6,23,,Shared,,Open,2026-09-01,2026-11-30,"Site legal docs (ToS, privacy, cookie + consent banner) + lawyer review"
M6,25.1,25,Internal,Lucio,Open,2026-11-01,2027-01-31,Registro trattamenti + retention policy; consent flows audit; breach procedure
M6,25.2,25,Shared,,Open,2026-11-15,2026-12-31,"DPAs with processors (Supabase, Vercel, Anthropic, Stripe, Resend)"
M6,N10,,Shared,Lucio,Open,2026-09-01,2026-11-30,"DPIA on the matching / job-brief LLM flow, written before launch rather than after"
M6,N9,,Internal,Lucio,Open,2026-09-01,2026-10-15,Waitlist launch email needs an explicit 'contact me at launch' checkbox before a single send — no soft opt-in for Bob
M6,23.1,23,Shared,Lucio,Open,2026-09-01,2026-11-30,"Controllo consumeristico sul listino pro pubblicato l'08/08: la tabella elenca le funzioni del Business Plan §6.2, fra cui fatturazione elettronica integrata, pagamenti inclusi e analytics avanzate, che non esistono ancora in prodotto. Oggi il rischio e' contenuto perche' non c'e' checkout (il tier lo assegna l'admin), ma quando si accende Stripe (12.1) elencare funzioni non disponibili e' pratica commerciale ingannevole (Codice del Consumo art. 21-22). Decidere per ogni riga: costruirla, riscriverla o rimuoverla."
M7,11.1,11,Internal,Lucio,Open,2026-10-01,2026-10-31,"Ranking algorithm v1: response rate, closure rate, reviews (data logic)"
M7,11.2,11,Client/Pro,André,Open,2026-10-15,2026-11-15,Ranking explanation UI (seeded by 'why this pro' line)
M7,11.3,11,Client/Pro,André,Open,2026-11-01,2026-11-30,Boost purchase + placement logic; quality floor
M7,12.1,12,Client/Pro,André,Open,2026-10-01,2026-11-30,Stripe products & prices; checkout + customer portal
M7,12.2,12,Shared,André,Open,2026-11-01,2026-11-30,Webhooks -> subscription_tier sync (replaces manual switch)
M7,12.3,12,Client/Pro,André,Open,2026-11-15,2026-12-31,"Founding-pro coupon; failed payments, invoices, receipts"
M7,PG,,Shared,Claude,Dormant,,,Payments/subscriptions groundwork — si accende con Stripe (vedi M7/12.1)
M7,12.4,12,Client/Pro,André,Open,2026-10-01,2026-12-31,"Allineare il gating in codice al listino pubblicato su /per-i-professionisti (08/08): la tabella piani annuncia ranking privilegiato, richieste illimitate, preventivi digitali e assistente AI, ma oggi il tier gates SOLO le foto portfolio (PORTFOLIO_LIMITS 0/1/illimitato) e la prenotazione diretta (InstantBookingConfig, pro+). Finche' il gating non c'e', il Free ha di fatto quasi tutto il Pro: nessuno ha motivo di pagare. Va chiuso PRIMA del checkout (12.1)."
M8,13.2,13,Client/Pro,André,In progress,2026-08-01,2026-10-31,"Pagine servizio x citta'. FATTO il 10/08: rotta /servizi/{servizio}/{citta} per le sole citta' attive (le non attive restano sulla waitlist di /citta/[slug] per non fare doorway page), fascia di prezzo reale dalle tariffe dichiarate, JSON-LD Service+AggregateOffer+BreadcrumbList, parametri di ranking dichiarati in pagina (P2B art. 5), sitemap con le sole combinazioni che hanno almeno un professionista, link interni da /servizi/[slug] e /citta/[slug]. RESTA: ottimizzazione keyword sui title, contenuto locale unico per citta' (SEO.md §5.6) e le categorie core di Milano - oggi le combinazioni reali sono 5 e tutte a Milano, con UN professionista ciascuna: 5 professionisti in tutta la piattaforma, 3 verificati. CORREZIONE al messaggio del commit 4587dd1, che diceva 'pulizie 4 pro': erano 4 righe di professional_services, cioe' 4 sottoservizi dello stesso professionista, non 4 persone. La leva vera e' l'acquisizione (M8/30), non altro codice."
M8,14,,Shared,,Open,2026-11-01,2026-12-31,Google Business Profile + local presence
M8,15.1,15,Shared,,Open,2026-12-01,2026-12-15,"End-to-end QA of all flows (client, pro, admin)"
M8,15.2,15,Client/Pro,André,Open,2026-12-01,2026-12-20,Performance / Core Web Vitals pass
M8,15.3,15,Shared,,Open,2026-12-01,2026-12-20,Freelance security review (pre-launch)
M8,30,,Shared,,Open,2026-10-01,2027-03-31,Founder outreach — first 100 Milano pros
M8,N11,,Shared,Lucio,Open,2026-12-01,2026-12-31,Go-live checklist + a tested rollback (the written-down half of 15.5)
M8,15.6,15,Client/Pro,André,Open,2026-11-01,2026-12-31,"Estendere BobDot/BobBullet (src/components/ui.tsx, introdotti l'08/08) agli elenchi decorativi rimasti: empty state della dashboard, FAQ, pagine legali, ProWorkspace. Il pallino giallo e' l'unico segno di marca riconoscibile a colpo d'occhio; oggi vive su homepage e pagina pro. NON toccare i middot fra dati ('10:00 - Mario Rossi'): li' il separatore serve a leggere."
M9,16.1,16,Shared,,Open,2027-01-01,2027-01-31,Production cutover; activate founding pros (60-80) in 5 core categories
M9,16.2,16,Shared,,Open,2027-01-01,2027-01-31,Bob Pro subscriptions live (Stripe) + Boost on; launch PR wave
M9,31,,Shared,,Open,2027-01-01,2027-03-31,Launch incentives (3 months free Bob Pro for founding pros)
M9,32,,Shared,,Open,2027-01-01,2027-06-30,Paid ads ignition — Milano only (CAC < EUR25 Q1)
M9,33,,Shared,,Open,2027-01-01,2027-03-31,PR launch ('AI concierge che trova il professionista giusto con prezzi chiari')
L1,24,,Shared,,Open,2026-09-01,2026-10-31,"Trademark 'Bob' (UIBM/EUIPO, classes 35, 42)"
L1,26,,Shared,,Open,2026-12-01,2027-02-28,SRL incorporation (Q1 Year 1)
L1,27,,Shared,,Open,2027-04-01,2027-06-30,Finanza agevolata application (Q2 Year 1)
L1,28,,Shared,,Open,2027-05-01,2027-09-30,Garanzia Bob legal framework + payments compliance (Stripe Connect KYC)
L2,13,,Client/Pro,André,In progress,2026-08-01,2027-12-31,SEO content engine (ongoing)
L2,13.3,13,Client/Pro,André,Open,2026-10-01,2027-03-31,'Quanto costa' price guides; Roma+Torino pages before activation
PARK,17,,Client/Pro,André,Parked,,,Unlimited requests (subscribers) + digital quotes
PARK,17.1,17,Client/Pro,André,Parked,,,Free-tier request limits + upgrade paywall
PARK,17.2,17,Client/Pro,André,Parked,,,Quote builder for pros + client quote comparison + accept flow
PARK,18,,Shared,,Parked,,,Security audit (gate before payments)
PARK,19,,Client/Pro,André,Parked,,,Protected flow — payments + Garanzia Bob
PARK,19.1,19,Client/Pro,André,Parked,,,"Stripe Connect: deposit/escrow, payouts; dispute + mediation tooling"
PARK,19.2,19,Client/Pro,André,Parked,,,Verified reviews tied to protected jobs; 8% success fee billing
PARK,20,,Shared,,Parked,,,Roma + Torino activation
PARK,21,,Shared,,Parked,,,"Bologna, Firenze, Napoli activation"
PARK,22,,Shared,,Parked,,,National infrastructural opening (organic only)
PARK,34,,Shared,,Parked,,,Pro referral program + territorial partnerships
PARK,36,,Internal,Lucio,Gate,,,"End-Q1 2027: 60-80 active pros, 150+ req/mo, match >60%"
PARK,37,,Internal,Lucio,Gate,,,"End-2027: 600 pros, 1,500 req/mo, 25% protected-flow, CAC < EUR15"
PARK,38,,Client/Pro,André,Parked,,,Business accounts — multi-employee organizations (manage workers + appointments)
PARK,38.0,38,Shared,André,Parked,,,"Design spike: org data model — DECIDED, see docs/Bob_Business_Accounts_Design_Spike.md (Bundle 2, additive; workers-as-records; company assigns)"
PARK,38.1,38,Client/Pro,André,Parked,,,organizations + organization_members + roles (owner/admin/worker); RLS pool model via is_org_member(); retention + deletion path
PARK,38.2a,38,Client/Pro,André,Parked,,,Worker-level scheduling: per-worker availability + assignment + DB overlap constraint (btree_gist exclude); company assigns
PARK,38.2b,38,Client/Pro,André,Parked,,,Communication step 1 (office-as-hub): company identity + worker attribution (sender_member_id); dispatcher messages/reschedules for worker
PARK,38.3,38,Internal,Lucio,Parked,,,"Business onboarding + docs: company VAT/visura verification, seat management (extends #10)"
PARK,38.4,38,Client/Pro,André,Parked,,,Multi-seat Business billing — per-seat via Stripe quantity (extends #12)
PARK,38.5,38,Shared,Lucio,Parked,,,Compliance: employer-as-controller DPA + RoPA rows; Platform Work Directive / Annex III scope check
PARK,38.6,38,Client/Pro,André,Parked,,,"Step 2 (PILOT-GATED, form TBD): scoped worker access — per-job magic link or limited login; least-privilege RLS"
PARK,39,,Client/Pro,André,Parked,,,"Two-way reviews — business to client reliability signal (PRIVATE, not public consumer scores)"
PARK,39.0,39,Shared,Lucio,Parked,,,DPIA + LIA + policy: private reliability signal; retaliation guard; Art 22 no auto-exclude; transparency + right to object
PARK,39.1,39,Client/Pro,André,Parked,,,Schema: customer reliability ratings tied to completed appointment/request; RLS; de-identify on deletion
PARK,39.2,39,Client/Pro,André,Parked,,,Pro UI to rate reliability; customer transparency + right-to-reply; align with verified reviews #19.2
PARK,40,,Client/Pro,André,Parked,,,Parking & vehicle-access metric (can my car reach the address? parking nearby?)
PARK,40.0,40,Client/Pro,André,Parked,,,Address geocoding enabler (address to coarse zone; maps vendor DPA/EU) — prerequisite
PARK,40.1,40,Client/Pro,André,Parked,,,"ZTL / Area B & C vehicle-access checker (vehicle emission class + Milan zone rules) — deterministic, high value for out-of-town pros"
PARK,40.2,40,Client/Pro,André,Parked,,,Parking-difficulty index + nearby paid-garage links (research spike first; real-time free-spot count not feasible)
PARK,40.3,40,Client/Pro,André,Parked,,,Map of the day itinerary in the pro calendar (pins in time order) — depends on 40.0 geocoding + vendor DPA
PARK,10.11,10,Shared,Lucio,Gate,,,"DECISIONE: cosa sblocca il livello — categorie con gate al contatto, durata, peso nel ranking, cosa puo' fare un Iscritto (doc §6). Parcheggiata il 14/08 (da decidere con André, data da destinarsi). NOTA 14/08 sera: una parte e' stata di fatto decisa da Lucio col nuovo onboarding — la verifica P.IVA e' ora ESCLUSIVA dei piani a pagamento (Pro/Business), il Free non la vede. Da ratificare con André insieme al resto della decisione."
M6,N12,,Internal,Lucio,Open,2026-09-01,2026-11-30,"La cancellazione account deve svuotare anche la cartella <user_id>/ del bucket verifica-documenti: le righe di verification_documents cadono a cascata (FK), i FILE nello storage no. Registrato come punto 8 delle lacune ROPA. Regola di progetto: ogni tabella nuova ha un percorso di cancellazione — per lo storage va costruito."
M4,AREA1,,Client/Pro,Claude,In progress,2026-08-19,2026-08-31,"Area personale: LAVORO e IMPOSTAZIONI separati (revisione di Lucio del 19/08 pomeriggio - ""sono 2 robe diverse""). Nella prima versione tutto stava sotto /dashboard e la barra laterale metteva ""Oggi"" accanto a ""Accesso e sicurezza"": il lavoro di ogni giorno sulla stessa fila di cose che si aprono due volte l'anno. Ora /dashboard e' SOLO lavoro (pro: richieste, calendario, giornata; cliente: lavori in corso, appuntamenti, e un bottone per cercare un professionista) e le 9 sezioni di configurazione vivono sotto /impostazioni con un guscio proprio, che in cima ha il ritorno al lavoro. HEADER: via l'etichetta ""Account"", identica per tutti e muta su cosa contenesse; il bottone visibile porta al lavoro e dipende dal ruolo (""Il mio lavoro"" / ""I miei lavori""), la configurazione e' un'icona UserCog accanto - non Settings, che nello stesso header e' gia' il pannello Admin. Quattro redirect 307 in next.config.mjs, con i due casi speciali PRIMA del jolly. Aggiunti /impostazioni a robots.ts e a ProBanner. TROVATO CON LA PROVA SULLE ROTTE, non leggendo il file: il jolly scritto :sezione* combaciava anche con ZERO segmenti, quindi /dashboard nudo rimbalzava su /impostazioni e l'area di lavoro era irraggiungibile - corretto in :sezione+. RESTA PER CHIUDERLA: controllo dal vivo dopo il deploy (desktop e 390px), con attenzione al bottone del ruolo nel header e al ritorno dal guscio delle impostazioni."
M4,10.15,,Internal,Lucio,Open,2026-08-19,2026-09-05,"registraGiro() anche al return finale di api/cron/verifica-piva, con i contatori confermati/daEsaminare/ancoraGiu gia' calcolati nel corpo. Oggi la chiamata sta solo sul ramo casi.length === 0, e si vede: 11 giri su 11 scrivono esaminati 0. Un semaforo verde che dimostra solo che il processo parte. Con l'outreach di ottobre serve sapere cosa ha fatto."
M7,P2.16,,Shared,Lucio,Open,2026-08-19,2026-09-30,"Scadenza e decadenza del codice fondatori. Verificato il 19/08: BOB-FOUNDER-2026 ha max_uses NULL e expires_at NULL, cioe' Bob Business gratis, illimitato e senza scadenza per chiunque abbia il codice. Il piano del 18/08 da' per scontato che i promo dei primi sessanta scadano a febbraio: nel database non c'e' niente che scada. Con 3 pro non e' un problema, da ottobre con il codice in giro per l'outreach lo diventa. Serve: un tetto, una scadenza, e un declassamento mai automatico (preavviso + motivazione, art. 4 P2B). /dashboard/piano oggi dice la verita' al pro - ""non ha una data di scadenza"" - il che rende il problema visibile invece che implicito."
M6,PWD2,,Client/Pro,Claude,In progress,2026-08-19,2026-08-26,"Doppia password all'iscrizione. Il form aveva UN solo campo e nessun controllo di lunghezza lato client, con placeholder e minLength ancora a 6 mentre Supabase rifiuta sotto gli 8 dal 9 agosto: chi sbagliava a digitare si registrava con una password che non conosceva e l'unica uscita era 'password dimenticata'. Funziona - quella mail la manda Supabase, non Resend - ma e' un giro che non deve servire, e a ottobre lo farebbe un professionista appena reclutato al telefono. Ora: secondo campo in iscrizione, avviso immediato se non coincidono, soglia PASSWORD_MIN=8 in una costante sola. CONDIZIONE PER CHIUDERLA: push, deploy e una prova di iscrizione vera."
M6,CANC1,,Shared,Claude,In progress,2026-08-19,2026-08-26,"Cancellazione account: scritta e provata, IN ATTESA DI DEPLOY. Condizioni per chiuderla: (1) push e deploy; (2) CRON_SECRET e' gia' in produzione ma il nuovo cron /api/cron/cancella-account e' registrato in vercel.json solo da questo commit, quindi il primo giro va verificato in system_job_runs - questa volta la riga si scrive SEMPRE, anche a vuoto e in errore, proprio per non ripetere gli undici semafori verdi di verifica-piva; (3) una prova end-to-end vera: chiedere la cancellazione di un account di test, controllare che sparisca dagli elenchi, annullare, ricontrollare che torni. AGGIORNAMENTO 25/08: ""in attesa di deploy"" era vero solo a meta', perche' non c'era niente da deployare. Il codice non era mai stato committato: dal 19 al 25 agosto la 056 e' stata in produzione mentre le 996 righe che la usano non stavano in nessun commit e su nessun ramo (git log --all --grep=cancellazione: zero risultati) - vivevano solo in un file di patch salvato nel progetto Claude. Ripristinate il 25/08 col commit db49be7, verificando una per una le 20 impronte git scritte nel patch: tutte coincidono, quindi il ripristino e' il lavoro del 19/08 byte per byte e non una riscrittura. Build e lint puliti; deploy confermato dall'esterno, perche' il testo nuovo dell'informativa e' comparso su www.meetonda.com/privacy. LA LEZIONE, che vale piu' di questa riga: e' la SECONDA volta dopo la 015/016 che una migrazione vive in produzione senza il suo file nel repo, e stavolta si e' portata dietro anche il codice. Il controllo che manca non e' umano: nessuno script confronta la storia delle migrazioni live con supabase/migrations, e finche' non c'e' la prossima deriva la trovera' un'ispezione, non un test. RESTA PER CHIUDERLA: il primo giro del cron in system_job_runs (dopo le 23:00 UTC) e la prova end-to-end vera."
M6,RET1,,Internal,Lucio,Open,2026-10-01,2026-10-31,"Job di retention (P3.9). Due regole sono DICHIARATE nel ROPA e non ancora APPLICATE da nessun codice, e finche' e' cosi' quelle righe del registro sono incomplete: i ticket di assistenza anonimi (support_tickets con user_id null) vanno cancellati dopo 12 mesi, e i dati di prospect/waitlist idem. Il cron della cancellazione account e' il posto naturale dove aggiungerle: gira ogni notte e ha gia' il service role e la registrazione del giro."
M6,FOTO1,,Internal,Lucio,Open,2026-10-16,2026-10-21,"Un cliente non deve poter farsi dare la foto di un altro (findings.csv, serious, 16/10). /api/bob/brief salva i percorsi delle foto come li manda il browser, e l'export art. 15/20 e /api/pro/request-summary li usano col service role. Correzione: /api/bob/chat restituisce col percorso un'attestazione firmata dal server, /api/bob/brief scarta ogni percorso non attestato; export e request-summary rifiutano un percorso citato da un brief di un altro. Fatto quando: un brief salvato col percorso della foto di un altro non la fa uscire ne' dall'export ne' da request-summary, provato dal vivo."
